# Schedule

How a schedule from MS Project changed from version to version. A marks actual dates.

## Version 1 (saved 2013-01-03)

| ID | WBS | Task | Duration | Start | Finish |
| --- | --- | --- | --- | --- | --- |
| 1 | 1 | **Initiating** | 1d | 2013-01-03 08:00 | 2013-01-03 16:00 |
| 2 |  | Hold kick off meeting | 1.12d | 2013-01-03 08:00 | 2013-01-03 17:00 |
| 3 | 2 | **Planning** | 5.62d | 2013-01-04 08:00 | 2013-01-07 17:00 |
| 4 |  | Prepare project introduction | 1d | 2013-01-04 08:00 | 2013-01-04 16:00 |
| 5 |  | <New Task> | 0.5d? | 2013-01-04 08:00 | 2013-01-04 11:59 |
| 6 |  | <New Task> | 0.5d? | 2013-01-04 08:00 | 2013-01-04 11:59 |
| 7 |  | Executing | 68.89d | 2012-12-06 08:00 | 2013-04-15 17:00 |

## Version 2 (saved 2013-01-26)

Last finish 2013-04-15 → 2013-04-30 (+15d). Complete tasks 0 → 3.

Added:

| ID | Task | Duration | Start | Finish | Constraint | Resources |
| --- | --- | --- | --- | --- | --- | --- |
| 8 | **Vendor Plugin** | 16.08d | 2013-01-04 A | 2013-01-26 |  | Vượng |
| 9 | Create Mockup | 1d | 2013-01-04 A | 2013-01-04 A |  | Vượng |
| 10 | Review Mockup | 1d | 2013-01-05 A | 2013-01-05 A |  | Vượng |
| 11 | Create Basic Design (Architecture Design) | 6.12d | 2013-01-04 | 2013-01-08 |  |  |
| 12 | Review Basic Design | 1d | 2013-01-09 | 2013-01-09 |  |  |
| 13 | Create Detail Design | 4d | 2013-01-10 | 2013-01-14 |  |  |
| 14 | Review Detail Design | 1d | 2013-01-13 | 2013-01-13 |  |  |
| 15 | Coding | 5d | 2013-01-14 | 2013-01-20 |  |  |
| 16 | Coding Review | 1d | 2013-01-21 | 2013-01-21 |  |  |
| 17 | Unit Testing | 2d | 2013-01-22 | 2013-01-23 |  |  |
| 18 | Vendor Plugin Deliverables | 0d | 2013-01-24 | 2013-01-24 |  |  |
| 19 | **AutoSchedule** | 16.44d | 2013-01-03 A | 2013-02-01 |  | Khánh |
| 20 | Create Mockup | 1d | 2013-01-03 A | 2013-01-03 |  | Khánh |
| 21 | Review Mockup | 1d | 2013-01-04 | 2013-01-04 |  | Khánh |
| 22 | Create Basic Design (Architecture Design) | 6d | 2013-01-05 | 2013-01-13 |  | Khánh |
| 23 | Review Basic Design | 1d | 2013-01-14 | 2013-01-14 |  | Khánh |
| 24 | Create Detail Design | 5d | 2013-01-15 | 2013-01-21 |  | Khánh |
| 25 | Review Detail Design | 1d | 2013-01-22 | 2013-01-22 |  | Khánh |
| 26 | Coding | 5d | 2013-01-23 | 2013-01-29 |  | Khánh |
| 27 | Coding Review | 1d | 2013-01-30 | 2013-01-30 |  | Khánh |
| 28 | Unit Testing | 2d | 2013-01-31 | 2013-02-01 |  | Khánh |
| 29 | AutoSchedule Deliverables | 0d | 2013-01-03 | 2013-01-03 |  | Khánh |
| 30 | **Report** | 13.5d | 2013-01-03 A | 2013-01-26 |  | Thịnh |
| 31 | Report list | 2d | 2013-01-03 A | 2013-01-04 A |  | Thịnh |
| 32 | Review Report List | 1d | 2013-01-03 | 2013-01-03 |  |  |
| 33 | Report Design + Reviewing | 15d | 2013-01-03 | 2013-01-26 |  |  |
| 34 | Report Deliverables | 0.5d | 2013-01-03 | 2013-01-03 |  |  |
| 35 | **Hub Management** | 18.93d | 2013-01-04 A | 2013-02-06 |  | Anh |
| 36 | Create Mockup | 2d | 2013-01-04 A | 2013-01-05 |  | Thịnh |
| 37 | Review Mockup | 1d | 2013-01-06 | 2013-01-06 |  |  |
| 38 | Create Basic Design (Architecture Design) | 5d | 2013-01-07 | 2013-01-13 |  |  |
| 39 | Review Basic Design | 1d | 2013-01-14 | 2013-01-14 |  |  |
| 40 | Create Detail Design | 6d | 2013-01-15 | 2013-01-23 |  |  |
| 41 | Review Detail Design | 1d | 2013-01-24 | 2013-01-24 |  |  |
| 42 | Coding | 8d | 2013-01-25 | 2013-02-05 |  |  |
| 43 | Coding Review | 1d | 2013-02-06 | 2013-02-06 |  |  |
| 44 | Unit Testing | 2d | 2013-01-07 | 2013-01-08 |  |  |
| 45 | AutoSchedule Deliverables | 0d | 2013-01-08 | 2013-01-08 |  |  |
| 46 | **Web For Vendor Management Product** | 0.5d? | 2012-12-27 | 2012-12-27 |  |  |
| 47 | Create Mockup | 4.12d | 2013-01-12 | 2013-01-13 |  | Anh |
| 48 | Review Mockup | 1d | 2013-01-14 | 2013-01-14 |  | Khánh |
| 49 | Create Basic Design (Architecture Design) | 12d | 2013-01-26 | 2013-02-24 |  |  |
| 50 | Review Basic Design | 1d | 2013-02-24 | 2013-02-24 |  |  |
| 51 | Coding | 10d | 2013-02-25 | 2013-03-12 |  |  |
| 52 | Coding Review | 1d | 2013-03-13 | 2013-03-13 |  |  |
| 53 | Unit Testing | 2d | 2013-03-14 | 2013-03-15 |  |  |
| 54 | Deliverables | 0d | 2013-02-16 | 2013-02-16 |  |  |
| 55 | **Testing** | 33.52d | 2013-03-01 | 2013-04-22 |  |  |
| 56 | Project Scope Studying | 7d | 2013-03-01 | 2013-03-10 |  |  |
| 57 | Create Test View Point Document | 7d | 2013-03-11 | 2013-03-21 |  |  |
| 58 | Review Test Viewpoint Document | 1d | 2013-03-21 | 2013-03-21 |  |  |
| 59 | Create Integration Test Case Document | 10d | 2013-03-20 | 2013-04-04 |  |  |
| 60 | Review Integration Test Case Document | 1d | 2013-04-04 | 2013-04-04 |  |  |
| 61 | Perform Test | 10d | 2013-04-05 | 2013-04-20 |  |  |
| 62 | Review Test Report | 1d | 2013-04-20 | 2013-04-20 |  |  |
| 63 | Deliverable: Test Report | 0d | 2013-04-20 | 2013-04-20 |  |  |
| 64 | **Monitoring and Controlling** | 57.04d | 2013-01-07 | 2013-04-28 |  |  |
| 65 | **Weekly Report** | 53.8d | 2013-01-13 | 2013-04-28 |  |  |
| 66 | Weekly Report 1 | 1d | 2013-01-13 | 2013-01-13 | start no earlier than 2013-01-13 |  |
| 67 | Weekly Report 2 | 1d | 2013-01-20 | 2013-01-20 | start no earlier than 2013-01-20 |  |
| 68 | Weekly Report 3 | 1d | 2013-01-27 | 2013-01-27 | start no earlier than 2013-01-27 |  |
| 69 | Weekly Report 4 | 1d | 2013-02-03 | 2013-02-03 | start no earlier than 2013-02-03 |  |
| 70 | Weekly Report 5 | 1d | 2013-02-10 | 2013-02-10 | start no earlier than 2013-02-10 |  |
| 71 | Weekly Report 6 | 1d | 2013-02-17 | 2013-02-17 | start no earlier than 2013-02-17 |  |
| 72 | Weekly Report 7 | 1d | 2013-02-24 | 2013-02-24 | start no earlier than 2013-02-24 |  |
| 73 | Weekly Report 8 | 1d | 2013-03-03 | 2013-03-03 | start no earlier than 2013-03-03 |  |
| 74 | Weekly Report 9 | 1d | 2013-03-10 | 2013-03-10 | start no earlier than 2013-03-10 |  |
| 75 | Weekly Report 10 | 1d | 2013-03-17 | 2013-03-17 | start no earlier than 2013-03-17 |  |
| 76 | Weekly Report 11 | 1d | 2013-03-24 | 2013-03-24 | start no earlier than 2013-03-24 |  |
| 77 | Weekly Report 12 | 1d | 2013-03-31 | 2013-03-31 | start no earlier than 2013-03-31 |  |
| 78 | Weekly Report 13 | 1d | 2013-04-07 | 2013-04-07 | start no earlier than 2013-04-07 |  |
| 79 | Weekly Report 14 | 1d | 2013-04-14 | 2013-04-14 | start no earlier than 2013-04-14 |  |
| 80 | Weekly Report 15 | 1d | 2013-04-21 | 2013-04-21 | start no earlier than 2013-04-21 |  |
| 81 | Weekly Report 16 | 1d | 2013-04-28 | 2013-04-28 | start no earlier than 2013-04-28 |  |
| 82 | **Monthly Assesment** | 45.08d | 2013-01-07 | 2013-04-07 |  |  |
| 83 | Monthly Assesment 1 | 1d | 2013-01-07 | 2013-01-07 | start no earlier than 2013-01-07 |  |
| 84 | Monthly Assesment 2 | 1d | 2013-02-07 | 2013-02-07 | start no earlier than 2013-02-07 |  |
| 85 | Monthly Assesment 3 | 1d | 2013-03-07 | 2013-03-07 | start no earlier than 2013-03-07 |  |
| 86 | Monthly Assesment 4 | 1d | 2013-04-07 | 2013-04-07 | start no earlier than 2013-04-07 |  |
| 87 | Closing | 0.5d? | 2012-12-05 | 2012-12-05 |  |  |

Changed:

| ID | Task | Start | Finish | Duration | Complete | Other |
| --- | --- | --- | --- | --- | --- | --- |
| 1 | **Initiating** | 2013-01-03 08:00 → 2013-01-03 | 2013-01-03 16:00 → 2013-01-03 |  |  |  |
| 2 | Hold kick off meeting | 2013-01-03 08:00 → 2013-01-03 | 2013-01-03 17:00 → 2013-01-03 |  |  | resources Khánh → Khánh; Anh; Thịnh; Vượng |
| 3 | **Planning** | 2013-01-04 08:00 → 2013-01-04 | 2013-01-07 17:00 → 2013-01-07 |  |  |  |
| 4 | Prepare project introduction | 2013-01-04 08:00 → 2013-01-04 | 2013-01-04 16:00 → 2013-01-04 |  |  |  |
| 5 | Develop Software Management Plan | 2013-01-04 08:00 → 2013-01-05 (+1d) | 2013-01-04 11:59 → 2013-01-06 (+2d) | 0.5d? → 2d |  | was named <New Task> |
| 6 | Review Project Plan | 2013-01-04 08:00 → 2013-01-07 (+3d) | 2013-01-04 11:59 → 2013-01-07 (+3d) | 0.5d? → 1d |  | was named <New Task> |
| 7 | **Executing** | 2012-12-06 08:00 → 2012-12-27 A (+21d) | 2013-04-15 17:00 → 2013-04-30 (+15d) | 68.89d → 65.4d | 0% → 4% |  |
